# infinity-beer

Schedule from ProjectLibre, 2022-01-26 to 2022-05-31.

## Calendars

- Padrão: Mon-Fri 08:00-12:00, 13:00-17:00; Sat-Sun off.

## Resources

| Resource | Rate |
| --- | --- |
| Não atribuído |  |
| Vinícius Bandeira | 70 |
| Eduardo Candido | 70 |
| Programador | 51 |
| Estagiário | 8.5 |
| Montador | 40 |
| Analista | 26 |
| Computador | 4000 |
| Insumos de Escritório | 350 |
| Data Center | 510 |
| Câmera | 400 |
| Project Owner |  |
| Cervejeira | 2500 |
| Roteador | 300 |
| UX Designer | 30 |

## Schedule

| ID | WBS | Task | Duration | Start | Finish | Predecessors | Complete | Baseline start | Baseline finish | Constraint | Resources |
| --- | --- | --- | --- | --- | --- | --- | --- | --- | --- | --- | --- |
| 1 | 1 | **Criação Cervejeira Automatizada** | 90d | 2022-01-26 | 2022-05-31 |  | 50% | 2022-01-26 | 2022-05-09 |  |  |
| 2 | 1.1 | **1 - Definição do Projeto** | 11d | 2022-01-26 | 2022-02-09 |  | 100% | 2022-01-26 | 2022-02-07 |  |  |
| 3 | 1.1.1 | Desenho do escopo do projeto | 3d | 2022-01-26 | 2022-01-28 |  | 100% | 2022-01-26 | 2022-01-28 |  | Vinícius Bandeira; Eduardo Candido; Project Owner |
| 4 | 1.1.2 | Levantamento de recursos | 4d | 2022-01-31 | 2022-02-03 | 3 | 100% | 2022-01-31 | 2022-02-02 |  | Vinícius Bandeira; Eduardo Candido |
| 5 | 1.1.3 | Definição de tarefas e prazos | 3d | 2022-02-07 | 2022-02-09 | 4 | 100% | 2022-02-03 | 2022-02-07 | start no earlier than 2022-02-05 | Vinícius Bandeira; Eduardo Candido |
| 6 | 1.2 | **2 - Implementação** | 70d | 2022-02-10 | 2022-05-18 |  | 51% | 2022-01-26 | 2022-04-26 |  |  |
| 7 | 1.2.1 | **2.1 - Aquisições** | 14d | 2022-02-10 | 2022-03-01 |  | 100% | 2022-02-08 | 2022-02-11 |  |  |
| 8 | 1.2.1.1 | Aluguel de Data Centers | 1d | 2022-02-10 | 2022-02-10 | 5 | 100% | 2022-02-08 | 2022-02-08 |  | Vinícius Bandeira; Data Center |
| 9 | 1.2.1.2 | Aquisição de Cervejeira e Dispositivos IOT | 2d | 2022-02-28 | 2022-03-01 | 8 | 100% | 2022-02-09 | 2022-02-11 | start no earlier than 2022-02-27 | Cervejeira; Vinícius Bandeira [50%]; Câmera [300%]; Roteador; Eduardo Candido [50%] |
| 10 | 1.2.2 | **2.2 - Desenvolvimento** | 61d | 2022-02-23 | 2022-05-18 |  | 49% | 2022-01-26 | 2022-04-26 |  |  |
| 11 | 1.2.2.1 | **2.2.1 - Front-end** | 48d | 2022-02-23 | 2022-04-29 |  | 44% | 2022-02-08 | 2022-04-07 |  |  |
| 12 | 1.2.2.1.1 | Desenho das telas do aplicativo | 9d | 2022-02-28 | 2022-03-10 | 5 | 100% | 2022-02-08 | 2022-02-16 |  | UX Designer; Computador; Insumos de Escritório |
| 13 | 1.2.2.1.2 | Validação das telas | 3d | 2022-02-23 | 2022-02-25 | 12 | 100% | 2022-02-17 | 2022-02-17 | start no earlier than 2022-02-22 | Vinícius Bandeira [50%]; Eduardo Candido [50%]; UX Designer [20%] |
| 14 | 1.2.2.1.3 | Criação do aplicativo mobile | 45d | 2022-02-28 | 2022-04-29 | 13 | 22% | 2022-02-18 | 2022-04-07 | start no earlier than 2022-02-21 | Computador; Programador |
| 15 | 1.2.2.2 | **2.2.2 - Back-end** | 31d | 2022-02-28 | 2022-04-11 |  | 77% | 2022-02-09 | 2022-03-23 |  |  |
| 16 | 1.2.2.2.1 | Criação do banco de dados dentro da AWS | 3d | 2022-02-28 | 2022-03-02 | 5, 8 | 100% | 2022-02-09 | 2022-02-10 |  | Analista; Computador; Data Center |
| 17 | 1.2.2.2.2 | Configuração das câmeras no AWS Kinesis | 8d | 2022-03-02 | 2022-03-11 | 16 | 100% | 2022-02-11 | 2022-02-22 |  | Analista; Computador; Data Center |
| 18 | 1.2.2.2.3 | Estruturação da arquitetura serverless com AWS EventBridge | 7d | 2022-03-16 | 2022-03-24 | 17 | 100% | 2022-02-23 | 2022-03-03 | start no earlier than 2022-03-16 | Programador; Computador; Data Center |
| 19 | 1.2.2.2.4 | Estabelecendo comunicação com AWS Lambda | 5d | 2022-03-25 | 2022-03-31 | 18 | 100% | 2022-03-04 | 2022-03-14 |  | Programador; Computador; Data Center |
| 20 | 1.2.2.2.5 | Criação de evento para nível baixo da cervejeira | 7d | 2022-04-01 | 2022-04-11 | 19 |  | 2022-03-15 | 2022-03-23 |  | Programador; Computador; Data Center |
| 21 | 1.2.2.3 | Vinculação do Back-end e Front-end | 4d | 2022-05-02 | 2022-05-05 | 14, 20 |  | 2022-04-08 | 2022-04-13 |  | Estagiário [50%]; Analista [50%]; Computador |
| 22 | 1.2.2.4 | **2.2.3 - Montagem e Treinamento** | 58d | 2022-02-28 | 2022-05-18 |  | 29% | 2022-01-26 | 2022-04-26 |  |  |
| 23 | 1.2.2.4.1 | Montagem do protótipo da cervejeira | 3d | 2022-02-28 | 2022-03-02 |  | 100% | 2022-01-26 | 2022-01-28 |  | Montador; Cervejeira; Roteador; Câmera [300%]; Vinícius Bandeira [20%]; Eduardo Candido [20%] |
| 24 | 1.2.2.4.2 | Treinamento de IA para as câmeras | 7d | 2022-05-06 | 2022-05-16 | 23, 21 |  | 2022-04-14 | 2022-04-22 |  | Vinícius Bandeira [20%]; Eduardo Candido [20%]; Estagiário; Analista [30%]; Computador |
| 25 | 1.2.2.4.3 | Teste de precisão da IA | 1d | 2022-05-17 | 2022-05-17 | 24 |  | 2022-04-25 | 2022-04-25 |  | Vinícius Bandeira [23.33%]; Analista [58.33%]; Estagiário [58.33%]; Computador; Cervejeira; Data Center |
| 26 | 1.2.2.4.4 | Teste de notificação de nível baixo da cervejeira | 1d | 2022-05-18 | 2022-05-18 | 25 |  | 2022-04-26 | 2022-04-26 |  | Cervejeira; Programador [25%]; Eduardo Candido [25%]; Estagiário [50%] |

Notes:
- 5: A definição de tarefas e prazos foi adiada devido ao atraso na etapa de levantamento de recursos. A etapa de levantamento de recursos demorou mais tempo que o previsto devido a burocracias bancárias que atrasaram o processo.
- 8: O valor do aluguel está como Material por se tratar de um valor fixo na atual situação. Se o trabalho fosse colocado como Trabalho para realmente ser cobrado durante um determinado período, a duração do aluguel interferia de forma direta e errônea a duração total do projeto. O cálculo base foi de 76 dias (aproximadamente a duração total do projeto) x 24 horas, com a hora custando R$ 0,25 totalizando o valor final de R$510 da estrutura de Data Centers da AWS.
- 9: A previsão da tarefa era de duração de 3 dias, mas apenas 2 dias foram suficiente para realizar a tarefa e a duração foi menor do que o previsto.
- 12: A etapa de desenho das telas do aplicativo pelo UX Designer precisou ser estendida por mais 1 dia, a duração foi maior do que o previsto pois na validação das telas surgiu a necessidade de alteração de uma das telas.
- 13: A validação das telas levou 1 dia a mais do que o esperado, pois surgiu a necessidade de redesenhar um dos mockups do aplicativo.
- 14: A tarefa atrasou porque durante a validação das telas surgiu a necessidade de alteração de alguns mockups, logo o prazo de início da criação do aplicativo teve que ser adiado.
- 16: A tarefa de criação do banco durou menos tempo do que o esperado, de acordo com o planejamento inicial a criação do banco de dados deveria levar 4 dias para ser feita, no entanto foi concluída em apenas 3 dias
- 17: A tarefa levou mais tempo do que o previsto, porque o tratamento das imagens da câmera estava com delay, devido ao processo de estabelecimento de comunicação ocasionado pelo protocolo RTSP - Real Time Stream Protocol e o AWS Kinesis Video Stream.
- 18: A tarefa iniciou atrasada porque a estruturação da arquitetura serverless depende da configuração das câmeras dentro do Kinesis e da criação do banco de dados. Como a configuração levou mais tempo que o esperado, a estruturação da arquitetura serverless teve o prazo de início afetado.
- 19: O estabelecimento da comunicação levou menos tempo do que o esperado, durando apenas 5 dias, ao invés de 7, que foi o inicialmente planejado

| ID | WBS | Task | Duration | Start | Finish | Predecessors | Baseline start | Baseline finish | Resources |
| --- | --- | --- | --- | --- | --- | --- | --- | --- | --- |
| 27 | 1.3 | **3 - Implantação** | 9d | 2022-05-19 | 2022-05-31 |  | 2022-04-27 | 2022-05-09 |  |
| 28 | 1.3.1 | Documentação | 7d | 2022-05-19 | 2022-05-27 | 26 | 2022-04-27 | 2022-05-05 | Insumos de Escritório; Computador; Vinícius Bandeira [50%]; Eduardo Candido [50%] |
| 29 | 1.3.2 | Publicação do Software | 2d | 2022-05-30 | 2022-05-31 | 28 | 2022-05-06 | 2022-05-09 | Analista; Computador; Data Center |
| 30 | 1.4 | Fim do projeto | 0d | 2022-05-31 | 2022-05-31 | 29, 28 | 2022-05-09 | 2022-05-09 | Vinícius Bandeira; Eduardo Candido; Project Owner |
